Schedule from MS Project, 2021-01-01 to 2021-06-07, costs in ₽.

## Calendars

- Стандартный: Mon-Fri 09:00-13:00, 14:00-18:00; Sat-Sun off.

## Resources

| Resource | Rate |
| --- | --- |
| Менеджер проекта | 333 |
| Бизнес-аналитик | 446 |
| Системный аналитик | 446 |
| Тестировщик | 315 |
| Специалист по внедрению | 298 |
| Дизайнер | 244 |
| Frontend-разработчик | 505 |
| Backend-разработчик | 505 |

## Schedule

| ID | Task | Duration | Start | Finish | Predecessors | Total slack | Free slack | Constraint | Resources | Work | Cost |
| --- | --- | --- | --- | --- | --- | --- | --- | --- | --- | --- | --- |
| 1 | Сбор требований | 10d | 2021-01-01 | 2021-01-14 |  | 0d |  | start no earlier than 2021-01-01 | Бизнес-аналитик; Менеджер проекта [40%] | 48h | 17,792 |
| 2 | Разработка и согласование ТЗ | 10d | 2021-01-15 | 2021-01-28 | 1 | 0d |  |  | Бизнес-аналитик; Менеджер проекта [50%]; Системный аналитик [40%] | 152h | 63,272 |
| 3 | Разработка технического проекта | 4d | 2021-01-29 | 2021-02-03 | 2 | 0d |  |  | Бизнес-аналитик [60%]; Менеджер проекта [30%]; Системный аналитик | 48h | 20,323.2 |
| 4 | Разработка моделей бизнес-процессов | 7d | 2021-02-04 | 2021-02-12 | 3 | 0d |  |  | Бизнес-аналитик | 56h | 24,976 |
| 5 | Проектирование интерфейсов | 5d | 2021-02-15 | 2021-02-19 | 4 | 77d | 0d |  | Дизайнер; Менеджер проекта [30%]; Бизнес-аналитик [40%] | 64h | 19,560 |
| 6 | Проектирование иерархии пользовательских интерфейсов | 2d | 2021-02-22 | 2021-02-23 | 5 | 77d |  |  | Бизнес-аналитик; Дизайнер [50%]; Менеджер проекта [30%] | 27.2h | 10,153.6 |
| 7 | Проектирование архитектуры серверной части | 5d | 2021-02-15 | 2021-02-19 | 4 | 0d |  |  | Менеджер проекта [30%]; Системный аналитик | 48h | 20,504 |
| 8 | Определение методов WEB API и их сигнатур | 2d | 2021-02-22 | 2021-02-23 | 7 | 0d |  |  | Системный аналитик; Менеджер проекта [20%] | 19.2h | 8,201.6 |
| 9 | Разработка тестов для серверной части | 5d | 2021-02-24 | 2021-03-02 | 8 | 0d |  |  | Менеджер проекта [30%]; Тестировщик [50%]; Backend-разработчик | 72h | 30,496 |
| 10 | Разработка тестов для клиентской части | 5d | 2021-03-03 | 2021-03-09 | 9 | 0d |  |  | Менеджер проекта [30%]; Тестировщик [50%]; Frontend-разработчик | 72h | 30,496 |
| 11 | Разработка серверной части | 20d | 2021-03-03 | 2021-03-30 | 9 | 10d | 0d |  | Менеджер проекта [20%]; Backend-разработчик | 184h | 88,792 |
| 12 | Разработка клиентской части | 25d | 2021-03-10 | 2021-04-13 | 10 | 0d |  |  | Менеджер проекта [20%]; Frontend-разработчик | 230h | 110,990 |
| 13 | Тестирование серверной части | 10d | 2021-03-31 | 2021-04-13 | 11 | 25d |  |  | Менеджер проекта [20%]; Тестировщик; Backend-разработчик [60%] | 140h | 53,436 |
| 14 | Тестирование взаимодействия серверной части и клиентской части | 5d | 2021-04-14 | 2021-04-20 | 12, 11 | 0d |  |  | Менеджер проекта [20%]; Тестировщик; Backend-разработчик [30%]; Frontend-разработчик [30%] | 72h | 27,384 |
| 15 | Тестирование работы клиентской части | 10d | 2021-04-21 | 2021-05-04 | 14 | 0d |  |  | Менеджер проекта [20%]; Тестировщик; Frontend-разработчик [60%] | 144h | 54,768 |
| 16 | Кроссбраузерное тестирование интерфейсов | 10d | 2021-05-05 | 2021-05-18 | 15 | 0d |  |  | Менеджер проекта [20%]; Тестировщик; Frontend-разработчик [60%] | 80h | 34,608 |
| 17 | Разработка пользовательской документации | 4d | 2021-05-19 | 2021-05-24 | 16, 13 | 0d |  |  | Бизнес-аналитик; Менеджер проекта [20%]; Системный аналитик | 70.4h | 30,675.2 |
| 18 | Внедрение ПО | 10d | 2021-05-25 | 2021-06-07 | 17 | 0d |  |  | Менеджер проекта [50%]; Специалист по внедрению | 120h | 37,160 |
